# 固定资产信息系统项目

Schedule from MS Project, 2018-02-13 to 2018-10-26, costs in ￥.

## Calendars

- 标准: Mon-Fri 08:00-12:00, 13:00-17:00; Sat-Sun off. Exceptions (off unless hours are given): 2018-10-01 to 2018-10-08 (国庆节), 2018-10-13 to 2018-10-14 09:00-12:00, 13:00-18:00 (加班).

## Resources

| Resource | Unit | Rate |
| --- | --- | --- |
| 刘刚 |  | 30 |
| 纸张 | 包 | 20 |
| 王磊 |  | 20 |
| 张海 |  | 10 |
| 郭胜 |  | 25 |
| 赵玉 |  | 16 |
| 冯宪 |  | 18 |
| 宋江 |  | 16 |
| 卢天 |  | 18 |
| 杨猫 |  | 19 |
| 会议室 |  | 100 |
| 电脑 | 台 | 10 |
| 打印机 |  | 5 |
| 编码工程师 |  | 30 |
| 交通费 |  |  |
| 差旅费 |  |  |
| 招待费 |  |  |
| 预算 |  |  |

## Schedule

| ID | WBS | Task | Type | Duration | Start | Finish | Predecessors | Baseline start | Baseline finish | Baseline duration | Total slack | Free slack | Constraint | Resources | Work | Cost | Baseline cost |
| --- | --- | --- | --- | --- | --- | --- | --- | --- | --- | --- | --- | --- | --- | --- | --- | --- | --- |
| 1 | 1 | **需求分析阶段** |  | 53d | 2018-02-13 | 2018-04-26 |  | 2018-02-13 | 2018-04-26 | 53d | 127d |  |  |  | 528h | 16,824 | 16,824 |
| 2 | 1.1 | **需求讨论** |  | 19d | 2018-02-13 | 2018-03-09 |  | 2018-02-13 | 2018-03-09 | 19d | 161d |  |  |  | 264h | 9,960 | 9,960 |
| 3 | 1.1.1 | 第一次需求讨论 |  | 10d | 2018-02-13 | 2018-02-26 |  | 2018-02-13 | 2018-02-26 | 10d | 161d | 0d |  | 冯宪; 郭胜; 刘刚 | 240h | 5,920 | 5,920 |
| 4 | 1.1.2 | 第二次需求讨论 |  | 3d | 2018-02-27 | 2018-03-01 | 3 | 2018-02-27 | 2018-03-01 | 3d | 161d | 0d | start no earlier than 2018-02-13 | 刘刚; 交通费 [0.1%]; 差旅费 [0.4%]; 招待费 [0.8%] | 24h | 4,040 | 4,040 |
| 5 | 1.1.3 | 第三次需求讨论 |  | 6d | 2018-03-02 | 2018-03-09 | 4 | 2018-03-02 | 2018-03-09 | 6d | 161d |  | start no earlier than 2018-02-13 |  |  |  |  |
| 6 | 1.2 | 需求分析 |  | 5d | 2018-04-20 | 2018-04-26 |  | 2018-04-20 | 2018-04-26 | 5d | 127d |  |  | 冯宪; 郭胜; 刘刚 | 120h | 3,120 | 3,120 |
| 7 | 1.3 | 编写需求说明书 |  | 6d | 2018-04-04 | 2018-04-11 |  | 2018-04-04 | 2018-04-11 | 6d | 138d |  |  | 冯宪; 郭胜; 刘刚 | 144h | 3,744 | 3,744 |
| 8 | 1.4 | 确认需求说明书 |  | 3d | 2018-02-13 | 2018-02-15 |  | 2018-02-13 | 2018-02-15 | 3d | 177d |  |  |  |  |  |  |
| 9 | 1.5 | 需求分析阶段结束 | milestone | 0d | 2018-02-13 | 2018-02-13 |  | 2018-02-13 | 2018-02-13 | 0d | 180d |  |  |  |  |  |  |
| 10 | 2 | **原型设计阶段** |  | 8d | 2018-02-13 | 2018-02-22 |  | 2018-02-13 | 2018-02-22 | 8d | 172d |  |  |  |  |  |  |
| 11 | 2.1 | 原型设计 |  | 4d | 2018-02-13 | 2018-02-16 |  | 2018-02-13 | 2018-02-16 | 4d | 176d |  |  |  |  |  |  |
| 12 | 2.2 | 原型开发 |  | 5d | 2018-02-13 | 2018-02-19 |  | 2018-02-13 | 2018-02-19 | 5d | 175d |  |  |  |  |  |  |
| 13 | 2.3 | 原型评审 |  | 6d | 2018-02-13 | 2018-02-20 |  | 2018-02-13 | 2018-02-20 | 6d | 174d |  |  |  |  |  |  |
| 14 | 2.4 | 原型确定 |  | 8d | 2018-02-13 | 2018-02-22 |  | 2018-02-13 | 2018-02-22 | 8d | 172d |  |  |  |  |  |  |
| 15 | 2.5 | 原型设计结束 | milestone | 0d | 2018-02-13 | 2018-02-13 |  | 2018-02-13 | 2018-02-13 | 0d | 180d |  |  |  |  |  |  |
| 16 | 3 | **系统设计阶段** |  | 58d | 2018-02-13 | 2018-05-03 |  | 2018-02-13 | 2018-05-03 | 58d | 122d |  |  |  | 40h | 1,400 | 1,400 |
| 17 | 3.1 | 概要设计 |  | 3d | 2018-02-13 | 2018-02-15 |  | 2018-02-13 | 2018-02-15 | 3d | 177d |  |  |  |  |  |  |
| 18 | 3.2 | 详细设计 |  | 4d | 2018-02-13 | 2018-02-16 |  | 2018-02-13 | 2018-02-16 | 4d | 176d |  |  |  |  |  |  |
| 19 | 3.3 | 设计评审 |  | 5d | 2018-04-27 | 2018-05-03 |  | 2018-04-27 | 2018-05-03 | 5d | 122d |  |  | 刘刚 | 40h | 1,400 | 1,400 |
| 20 | 3.4 | 设计修改 |  | 6d | 2018-02-13 | 2018-02-20 |  | 2018-02-13 | 2018-02-20 | 6d | 174d |  |  |  |  |  |  |
| 21 | 3.5 | 设计确认 |  | 7d | 2018-02-13 | 2018-02-21 |  | 2018-02-13 | 2018-02-21 | 7d | 173d |  |  |  |  |  |  |
| 22 | 3.6 | 系统设计阶段结束 | milestone | 0d | 2018-02-13 | 2018-02-13 |  | 2018-02-13 | 2018-02-13 | 0d | 180d |  |  |  |  |  |  |
| 23 | 4 | **系统编码阶段** |  | 63d | 2018-02-13 | 2018-05-10 |  | 2018-02-13 | 2018-05-10 | 63d | 117d |  |  |  | 920h | 24,058 | 24,058 |
| 24 | 4.1 | 编码规范确认 |  | 4d | 2018-02-13 | 2018-02-16 |  | 2018-02-13 | 2018-02-16 | 4d | 176d |  |  |  |  |  |  |
| 25 | 4.2 | 模块划分 |  | 5d | 2018-05-04 | 2018-05-10 |  | 2018-05-04 | 2018-05-10 | 5d | 117d |  |  | 冯宪; 郭胜; 刘刚 | 120h | 3,120 | 3,120 |
| 26 | 4.3 | 模块1编写 |  | 22d | 2018-03-05 | 2018-04-03 |  | 2018-03-05 | 2018-04-03 | 22d | 144d |  |  | 冯宪; 郭胜; 刘刚 | 528h | 13,728 | 13,728 |
| 27 | 4.4 | 模块2编写 |  | 6d | 2018-04-12 | 2018-04-19 |  | 2018-04-12 | 2018-04-19 | 6d | 132d |  |  | 冯宪; 郭胜; 刘刚 | 144h | 3,744 | 3,744 |
| 28 | 4.5 | 模块3编写 |  | 4d | 2018-02-27 | 2018-03-02 |  | 2018-02-27 | 2018-03-02 | 4d | 166d |  |  | 冯宪; 电脑 [1 台]; 编码工程师 [300%] | 128h | 3,466 | 3,466 |
| 29 | 4.6 | 模块4编写 |  | 4d | 2018-02-13 | 2018-02-16 |  | 2018-02-13 | 2018-02-16 | 4d | 176d |  |  |  |  |  |  |
| 30 | 4.7 | 其他模块编写 |  | 9d | 2018-02-13 | 2018-02-23 |  | 2018-02-13 | 2018-02-23 | 9d | 171d |  |  |  |  |  |  |
| 31 | 4.8 | 系统编码阶段结束 | milestone | 0d | 2018-02-13 | 2018-02-13 |  | 2018-02-13 | 2018-02-13 | 0d | 180d |  |  |  |  |  |  |

| ID | WBS | Task | Duration | Start | Finish | Baseline start | Baseline finish | Baseline duration | Total slack | Constraint |
| --- | --- | --- | --- | --- | --- | --- | --- | --- | --- | --- |
| 32 | 5 | **系统测试阶段** | 8d | 2018-02-13 | 2018-02-22 | 2018-02-13 | 2018-02-22 | 8d | 172d |  |
| 33 | 5.1 | 功能测试 | 5d | 2018-02-13 | 2018-02-19 | 2018-02-13 | 2018-02-19 | 5d | 175d |  |
| 34 | 5.2 | 单元测试 | 6d | 2018-02-13 | 2018-02-20 | 2018-02-13 | 2018-02-20 | 6d | 174d |  |
| 35 | 5.3 | 集成测试 | 7d | 2018-02-13 | 2018-02-21 | 2018-02-13 | 2018-02-21 | 7d | 173d |  |
| 36 | 5.4 | 性能测试 | 8d | 2018-02-13 | 2018-02-22 | 2018-02-13 | 2018-02-22 | 8d | 172d |  |
| 37 | 6 | 系统试运行阶段 | 60d | 2018-02-13 | 2018-05-07 | 2018-02-13 | 2018-05-07 | 60d | 120d |  |
| 38 | 7 | **项目例会** | 177d | 2018-02-16 | 2018-10-26 | 2018-02-16 | 2018-10-26 | 177d | 0d |  |
| 39 | 7.1 | 项目例会 1 | 1d | 2018-02-16 | 2018-02-16 | 2018-02-16 | 2018-02-16 | 1d | 176d | start no earlier than 2018-02-16 |
| 40 | 7.2 | 项目例会 2 | 1d | 2018-03-02 | 2018-03-02 | 2018-03-02 | 2018-03-02 | 1d | 166d | start no earlier than 2018-03-02 |
| 41 | 7.3 | 项目例会 3 | 1d | 2018-03-16 | 2018-03-16 | 2018-03-16 | 2018-03-16 | 1d | 156d | start no earlier than 2018-03-16 |
| 42 | 7.4 | 项目例会 4 | 1d | 2018-03-30 | 2018-03-30 | 2018-03-30 | 2018-03-30 | 1d | 146d | start no earlier than 2018-03-30 |
| 43 | 7.5 | 项目例会 5 | 1d | 2018-04-13 | 2018-04-13 | 2018-04-13 | 2018-04-13 | 1d | 136d | start no earlier than 2018-04-13 |
| 44 | 7.6 | 项目例会 6 | 1d | 2018-04-27 | 2018-04-27 | 2018-04-27 | 2018-04-27 | 1d | 126d | start no earlier than 2018-04-27 |
| 45 | 7.7 | 项目例会 7 | 1d | 2018-05-11 | 2018-05-11 | 2018-05-11 | 2018-05-11 | 1d | 116d | start no earlier than 2018-05-11 |
| 46 | 7.8 | 项目例会 8 | 1d | 2018-05-25 | 2018-05-25 | 2018-05-25 | 2018-05-25 | 1d | 106d | start no earlier than 2018-05-25 |
| 47 | 7.9 | 项目例会 9 | 1d | 2018-06-08 | 2018-06-08 | 2018-06-08 | 2018-06-08 | 1d | 96d | start no earlier than 2018-06-08 |
| 48 | 7.10 | 项目例会 10 | 1d | 2018-06-22 | 2018-06-22 | 2018-06-22 | 2018-06-22 | 1d | 86d | start no earlier than 2018-06-22 |
| 49 | 7.11 | 项目例会 11 | 1d | 2018-07-06 | 2018-07-06 | 2018-07-06 | 2018-07-06 | 1d | 76d | start no earlier than 2018-07-06 |
| 50 | 7.12 | 项目例会 12 | 1d | 2018-07-20 | 2018-07-20 | 2018-07-20 | 2018-07-20 | 1d | 66d | start no earlier than 2018-07-20 |
| 51 | 7.13 | 项目例会 13 | 1d | 2018-08-03 | 2018-08-03 | 2018-08-03 | 2018-08-03 | 1d | 56d | start no earlier than 2018-08-03 |
| 52 | 7.14 | 项目例会 14 | 1d | 2018-08-17 | 2018-08-17 | 2018-08-17 | 2018-08-17 | 1d | 46d | start no earlier than 2018-08-17 |
| 53 | 7.15 | 项目例会 15 | 1d | 2018-08-31 | 2018-08-31 | 2018-08-31 | 2018-08-31 | 1d | 36d | start no earlier than 2018-08-31 |
| 54 | 7.16 | 项目例会 16 | 1d | 2018-09-14 | 2018-09-14 | 2018-09-14 | 2018-09-14 | 1d | 26d | start no earlier than 2018-09-14 |
| 55 | 7.17 | 项目例会 17 | 1d | 2018-09-28 | 2018-09-28 | 2018-09-28 | 2018-09-28 | 1d | 16d | start no earlier than 2018-09-28 |
| 56 | 7.18 | 项目例会 18 | 1d | 2018-10-12 | 2018-10-12 | 2018-10-12 | 2018-10-12 | 1d | 12d | start no earlier than 2018-10-12 |
| 57 | 7.19 | 项目例会 19 | 1d | 2018-10-26 | 2018-10-26 | 2018-10-26 | 2018-10-26 | 1d | 0d | start no earlier than 2018-10-26 |
| 58 | 8 | 项目结束 | 1d? | 2018-02-13 | 2018-02-13 | 2018-02-13 | 2018-02-13 | 1d? | 179d |  |
